# 306gantt (1)

Schedule from MS Project, 2015-07-27 to 2015-08-27, A marks actual dates.
UoA

## Calendars

- Standard: Mon-Sun 08:00-12:00, 13:00-17:00.

## Resources

| Resource |
| --- |
| Everyone |
| Wesley |
| Chang Kon |
| Elliot |
| Lennon |
| Nikhil |
| John |
| Guyver |
| Paul |

## Schedule

| ID | WBS | Task | Type | Duration | Start | Finish | Predecessors | Complete | Remaining | Total slack | Free slack | Constraint | Deadline | Resources | Work | Actual work |
| --- | --- | --- | --- | --- | --- | --- | --- | --- | --- | --- | --- | --- | --- | --- | --- | --- |
| 1 | 1 | Project start | milestone, manual | 0d | 2015-07-27 | 2015-07-27 |  |  |  |  |  |  |  |  |  |  |
| 2 | 2 | **Planning** |  | 7d | 2015-07-27 A | 2015-08-03 |  | 99% | 0d | 0d |  |  |  |  | 336h | 336h |
| 3 | 2.1 | Requirements elicitation |  | 2d | 2015-07-27 A | 2015-07-28 A | 1 | 100% |  |  |  |  |  | Everyone | 16h | 16h |
| 4 | 2.2 | Brainstorm design options |  | 1d | 2015-07-29 A | 2015-07-29 A | 3 | 100% |  |  |  |  |  | Everyone | 8h | 8h |
| 5 | 2.3 | Design tradeoff analysis |  | 2d | 2015-07-30 A | 2015-07-31 A | 4 | 100% |  |  |  |  |  | Everyone | 16h | 16h |
| 6 | 2.4 | Elaborate design details |  | 2d | 2015-08-01 A | 2015-08-02 A | 5 | 100% |  |  |  |  |  | Everyone | 16h | 16h |
| 7 | 2.5 | Documentation |  | 7d | 2015-07-27 A | 2015-08-02 A | 3SS, 6FF | 100% |  |  |  |  |  | Chang Kon; Elliot; Nikhil; Paul; Wesley | 280h | 280h |
| 8 | 2.6 | Plan due | milestone, manual | 0d | 2015-08-03 | 2015-08-03 | 6, 7 |  |  |  |  |  | 2015-08-06 |  |  |  |
| 9 | 3 | **Implement robot nodes** |  | 8d? | 2015-08-03 A | 2015-08-10 |  | 44% | 4.47d? | 16d |  |  |  |  | 442h | 226h |
| 10 | 3.1 | Design parent robot class |  | 1d | 2015-08-03 A | 2015-08-03 A | 6, 7 | 100% |  |  |  |  |  | Chang Kon; Guyver; John; Nikhil; Wesley | 40h | 40h |
| 11 | 3.2 | Implement child classes for picker and carrier robot |  | 1d | 2015-08-04 A | 2015-08-04 A | 10 | 100% |  |  |  |  |  | Chang Kon; Guyver; John; Nikhil; Wesley | 40h | 40h |
| 12 | 3.3 | **Implement robot behaviors** |  | 4d? | 2015-08-05 A | 2015-08-08 |  | 38% | 2.5d? | 18d |  |  |  |  | 130h | 48h |
| 13 | 3.3.1 | Picker robot movement around rows in orchard |  | 1d? | 2015-08-05 A | 2015-08-05 | 11 | 50% | 0.5d? | 21d |  |  |  | Chang Kon; Guyver | 16h | 8h |
| 14 | 3.3.2 | Carrier robot movement to and from bins |  | 1d? | 2015-08-05 A | 2015-08-05 | 11 | 50% | 0.5d? | 0.5d | 0d |  |  | John; Nikhil | 16h | 8h |
| 15 | 3.3.3 | Robot detection of static objects in front |  | 1d | 2015-08-05 A | 2015-08-05 | 11 | 75% | 0.25d | 0.5d | 0d |  |  | Chang Kon; Guyver; John; Nikhil; Lennon | 34h | 24h |
| 16 | 3.3.4 | Robots stop moving or spin on the spot if obstacles are detected in front |  | 2d | 2015-08-06 A | 2015-08-07 | 15, 14 | 25% | 1.5d | 0.25d | 0d |  |  | Guyver; Nikhil | 32h | 8h |
| 17 | 3.3.5 | Dynamic obstacle detection (e.g. people and animals) in front |  | 1d | 2015-08-08 | 2015-08-08 | 16 |  |  | 0.25d | 0d |  |  | Chang Kon; Guyver; John; Nikhil | 32h |  |
| 18 | 3.4 | Unit/acceptance testing |  | 1d? | 2015-08-09 A | 2015-08-09 | 17 | 25% | 0.75d? | 0.75d | 0d |  |  | Everyone | 8h | 2h |
| 19 | 3.5 | Documentation |  | 7d | 2015-08-03 A | 2015-08-09 | 10SS, 18FF | 43% | 4d | 0.75d | 0d |  |  | Chang Kon; Guyver; John; Nikhil | 224h | 96h |
| 20 | 3.6 | Robot nodes and environment complete | milestone, manual | 1d? | 2015-08-10 | 2015-08-10 | 18, 19, 27, 28 |  |  |  |  | start no earlier than 2015-08-09 |  |  |  |  |
| 21 | 4 | **Simulate environment** |  | 7d? | 2015-08-03 A | 2015-08-09 |  | 48% | 3.67d? | 0.75d |  |  |  |  | 256h | 76h |
| 22 | 4.1 | Create a static bitmap for the orchard |  | 2d | 2015-08-03 A | 2015-08-04 | 6, 7 | 75% | 0.5d | 0.75d | 0d |  |  | Wesley | 16h | 12h |
| 23 | 4.2 | Create a class for person |  | 3d | 2015-08-05 A | 2015-08-07 A | 22 | 100% |  |  |  |  |  | John | 24h | 24h |
| 24 | 4.3 | Create a class for animal |  | 3d | 2015-08-05 A | 2015-08-07 A | 22 | 100% |  |  |  |  |  | John | 24h | 24h |
| 25 | 4.4 | Implement random orchard 'map' generation |  | 3d | 2015-08-05 | 2015-08-07 | 22 |  |  | 0.75d | 0d |  |  | Elliot; Lennon; Paul; Wesley | 96h |  |
| 26 | 4.5 | Implement configurable maps and settings from file |  | 1d? | 2015-08-08 | 2015-08-08 | 25, 23, 24 |  |  | 0.75d | 0d |  |  | Elliot; Lennon; Paul; Wesley | 32h |  |
| 27 | 4.6 | Unit/acceptance testing |  | 1d? | 2015-08-09 | 2015-08-09 | 26 |  |  | 0.75d | 0d |  |  | Everyone | 8h |  |
| 28 | 4.7 | Documentation |  | 7d | 2015-08-03 A | 2015-08-09 | 22SS, 27FF | 29% | 5d | 0.75d | 0d |  |  | Everyone | 56h | 16h |
| 29 | 5 | Prepare alpha demo |  | 3d | 2015-08-10 A | 2015-08-12 | 18, 19, 27, 28 | 33% | 2d | 1d | 0d |  |  | Everyone | 24h | 8h |
| 30 | 6 | Deliver Alpha demo | milestone, manual | 0d | 2015-08-13 | 2015-08-13 | 29 |  |  |  |  |  | 2015-08-13 | Everyone |  |  |

| ID | WBS | Task | Type | Duration | Start | Finish | Predecessors | Complete | Remaining | Total slack | Free slack | Constraint | Deadline | Resources | Work | Actual work |
| --- | --- | --- | --- | --- | --- | --- | --- | --- | --- | --- | --- | --- | --- | --- | --- | --- |
| 31 | 7 | **User Interface (GUI dashboard)** |  | 7d? | 2015-08-10 A | 2015-08-16 |  | 40% | 4.2d? | 0d |  |  |  |  | 624h | 216h |
| 32 | 7.1 | Display robot state on GUI |  | 6d | 2015-08-10 A | 2015-08-15 | 27, 28, 18, 19 | 50% | 3d | 0.25d | 0d |  |  | Chang Kon; John; Paul; Wesley | 168h | 72h |
| 33 | 7.2 | Display obstacle state on GUI |  | 6d | 2015-08-10 A | 2015-08-15 | 27, 28, 18, 19 | 50% | 3d | 0.25d | 0d |  |  | Chang Kon; John; Paul; Wesley | 168h | 72h |
| 34 | 7.3 | Unit/acceptance testing |  | 1d? | 2015-08-16 A | 2015-08-16 | 32, 33 | 25% | 0.75d? | 0d |  |  |  | Everyone | 8h | 2h |
| 35 | 7.4 | Documentation |  | 7d | 2015-08-10 A | 2015-08-16 | 32SS, 33SS, 34FF | 25% | 5.25d | 0d |  |  |  | Chang Kon; Guyver; John; Nikhil; Wesley | 280h | 70h |
| 36 | 8 | **Message passing** |  | 8d? | 2015-08-10 A | 2015-08-17 |  | 45% | 4.42d? | 0d |  |  |  |  | 384h | 212h |
| 37 | 8.1 | Pickers send messages to carriers when bin is full and dropped |  | 3d | 2015-08-10 A | 2015-08-12 | 27, 28, 18, 19 | 75% | 0.75d | 0.75d | 0d |  |  | Nikhil; Guyver | 30h | 18h |
| 38 | 8.2 | Carriers send messages to pickers when empty bins are dropped |  | 3d | 2015-08-10 A | 2015-08-12 | 27, 28, 18, 19 | 25% | 2.25d | 0.75d | 0d |  |  | Nikhil; Guyver | 42h | 6h |
| 39 | 8.3 | Robots able to subscribe to topics to receive messages |  | 3d | 2015-08-10 A | 2015-08-12 A | 27, 28, 18, 19 | 100% |  |  |  |  |  | Chang Kon; Guyver; John; Nikhil | 96h | 96h |
| 40 | 8.4 | Create message files for the above messages |  | 3d | 2015-08-10 A | 2015-08-12 A | 27, 28, 18, 19 | 100% |  |  |  |  |  | Chang Kon; Guyver; John | 72h | 72h |
| 41 | 8.5 | Maintaining carrier and picker state so the communication is triggered at the right times |  | 1d | 2015-08-13 A | 2015-08-13 | 38, 39, 40, 37 | 75% | 0.25d | 0d |  |  |  | Nikhil; Guyver | 16h | 12h |
| 42 | 8.6 | Communication between other robots (eg. Picker to picker, carrier to carrier) |  | 2d | 2015-08-14 | 2015-08-15 | 41 |  |  | 0d |  |  |  | Elliot; Lennon; Paul; Wesley | 64h |  |
| 43 | 8.7 | Unit/acceptance testing |  | 1d? | 2015-08-16 | 2015-08-16 | 42 |  |  | 0d |  |  |  | Everyone | 8h |  |
| 44 | 8.8 | Documentation |  | 7d | 2015-08-10 A | 2015-08-16 | 38SS, 39SS, 40SS, 43FF, 37SS | 14% | 6d | 0d |  |  |  | Everyone | 56h | 8h |
| 45 | 8.9 | GUI and message passing complete | milestone, manual | 1d? | 2015-08-17 | 2015-08-17 | 34, 35, 43, 44 |  |  |  |  |  |  |  |  |  |
| 46 | 9 | **Implement robot interactions** |  | 8d? | 2015-08-17 | 2015-08-24 |  |  |  | 0d |  |  |  |  | 256h |  |
| 47 | 9.1 | Robots maintain message memory |  | 2d | 2015-08-17 | 2015-08-18 | 34, 35, 43, 44 |  |  | 0d |  |  |  | Elliot; Lennon; Paul; Wesley | 64h |  |
| 48 | 9.2 | Co-ordinate kiwifruit collection and bin movement |  | 4d | 2015-08-19 | 2015-08-22 | 47 |  |  | 0d |  |  |  | Elliot; Lennon; Paul; Wesley | 128h |  |
| 49 | 9.3 | Unit/acceptance testing |  | 1d? | 2015-08-23 | 2015-08-23 | 48 |  |  | 0d |  |  |  | Everyone | 8h |  |
| 50 | 9.4 | Documentation |  | 7d | 2015-08-17 | 2015-08-23 | 47SS, 49FF |  |  | 0d |  |  |  | Everyone | 56h |  |
| 51 | 9.5 | Robot interactions complete | milestone, manual | 1d? | 2015-08-24 | 2015-08-24 | 49, 50 |  |  |  |  |  |  |  |  |  |
| 52 | 10 | Prepare final demo |  | 3d | 2015-08-24 | 2015-08-26 | 49, 50 |  |  | 0d |  |  |  | Everyone | 24h |  |
| 53 | 11 | Deliver Final demo | milestone, manual | 0d | 2015-08-27 | 2015-08-27 | 52 |  |  |  |  |  | 2015-08-27 | Everyone |  |  |
| 55 | 12 | **Team meetings** |  | 29d | 2015-07-27 A | 2015-08-24 |  | 56% | 12.89d | 2d |  |  |  |  | 72h | 40h |
| 56 | 12.1 | Team meetings 1 |  | 1d | 2015-07-27 A | 2015-07-27 A |  | 100% |  |  |  | start no earlier than 2015-07-27 |  | Everyone | 8h | 8h |
| 57 | 12.2 | Team meetings 2 |  | 1d | 2015-07-30 A | 2015-07-30 A |  | 100% |  |  |  | start no earlier than 2015-07-30 |  | Everyone | 8h | 8h |
| 58 | 12.3 | Team meetings 3 |  | 1d | 2015-08-03 A | 2015-08-03 A |  | 100% |  |  |  | start no earlier than 2015-08-03 |  | Everyone | 8h | 8h |
| 59 | 12.4 | Team meetings 4 |  | 1d | 2015-08-06 A | 2015-08-06 A |  | 100% |  |  |  | start no earlier than 2015-08-06 |  | Everyone | 8h | 8h |
| 60 | 12.5 | Team meetings 5 |  | 1d | 2015-08-10 A | 2015-08-10 A |  | 100% |  |  |  | start no earlier than 2015-08-10 |  | Everyone | 8h | 8h |
| 61 | 12.6 | Team meetings 6 |  | 1d | 2015-08-13 | 2015-08-13 |  |  |  | 13d |  | start no earlier than 2015-08-13 |  | Everyone | 8h |  |
| 62 | 12.7 | Team meetings 7 |  | 1d | 2015-08-17 | 2015-08-17 |  |  |  | 9d |  | start no earlier than 2015-08-17 |  | Everyone | 8h |  |
| 63 | 12.8 | Team meetings 8 |  | 1d | 2015-08-20 | 2015-08-20 |  |  |  | 6d |  | start no earlier than 2015-08-20 |  | Everyone | 8h |  |
| 64 | 12.9 | Team meetings 9 |  | 1d | 2015-08-24 | 2015-08-24 |  |  |  | 2d |  | start no earlier than 2015-08-24 |  | Everyone | 8h |  |
